# WBS Detallado

Schedule from MS Project, 2012-11-14 to 2013-06-06, A marks actual dates.

## Calendars

- Estándar: Mon-Fri 09:00-13:00, 15:00-19:00; Sat-Sun off. Exceptions (off unless hours are given): 2013-02-09 09:00-13:00, 15:00-19:00, 2013-02-16 09:00-13:00, 15:00-19:00, 2013-02-23 09:00-13:00, 15:00-19:00, 2013-03-09 09:00-13:00, 15:00-19:00, 2013-03-16 09:00-13:00, 15:00-19:00, 2013-03-23 09:00-13:00, 15:00-19:00, 2013-03-30 09:00-13:00, 15:00-19:00.

## Resources

| Resource |
| --- |
| Amira Lanao |
| Gino Guzman |
| Arnold Paico |
| Michel Aguilar |
| Manuel Saenz |

## Schedule

| ID | WBS | Task | Duration | Start | Finish | Predecessors | Complete | Remaining | Actual start | Total slack | Constraint | Resources | Work | Actual work | Text6 | Text7 |
| --- | --- | --- | --- | --- | --- | --- | --- | --- | --- | --- | --- | --- | --- | --- | --- | --- |
| 1 | 1 | **Sistema de Intranet de Alumnos - S.I.A** | 95d | 2013-02-05 | 2013-06-06 |  | 56% | 42.04d | 2012-11-14 |  |  |  | 1120h | 554.18h | 0% | 0% |
| 2 | 1.1 | **Iteracion 1** | 24d | 2013-02-05 A | 2013-03-05 |  | 34% | 15.84d |  |  |  |  | 552h | 178.18h | 0% | 0% |
| 3 | 1.1.1 | **Planificación** | 6d | 2013-02-05 A | 2013-02-11 |  | 29% | 4.29d |  |  |  | Amira Lanao | 216h | 72h | 0% | 0% |
| 4 | 1.1.1.1 | Plan de Proyecto | 4d | 2013-02-05 A | 2013-02-08 |  | 25% | 3d |  | 91d | finish no earlier than 2013-02-07 | Amira Lanao; Arnold Paico; Gino Guzman; Michel Aguilar | 128h | 32h | 100% | 100% |
| 5 | 1.1.1.2 | Cronograma Detallado | 2d | 2013-02-08 A | 2013-02-09 |  | 50% | 1d |  | 90d | finish no earlier than 2013-02-09 | Gino Guzman; Michel Aguilar | 32h | 16h | 100% | 100% |
| 6 | 1.1.1.3 | Informe Quincenal | 1d | 2013-02-09 A | 2013-02-09 |  |  | 1d |  | 90d | finish no earlier than 2012-09-04 | Arnold Paico | 8h |  | 100% | 100% |
| 7 | 1.1.2 | **Analisis de Riesgos** | 1d | 2013-02-09 A | 2013-02-09 A |  | 100% |  |  |  |  | Gino Guzman | 8h | 8h | 0% | 0% |
| 8 | 1.1.2.1 | Registro de Riesgos | 1d | 2013-02-09 A | 2013-02-09 A |  | 100% |  |  |  | finish no earlier than 2013-02-09 |  |  |  | 100% | 100% |
| 9 | 1.1.3 | **Ingeniería** | 12d | 2013-02-11 A | 2013-02-23 |  | 18% | 9.86d |  |  |  | Michel Aguilar | 280h | 66.18h | 0% | 0% |
| 10 | 1.1.3.1 | Modelaje Base de Datos | 6d | 2013-02-11 A | 2013-02-16 |  | 8% | 5.5d |  | 84d | finish no earlier than 2013-02-16 | Michel Aguilar; Arnold Paico | 56h | 8h | 100% | 100% |
| 11 | 1.1.3.2 | Desarrollo de Prototipos Interfaces | 8d | 2013-02-15 A | 2013-02-23 |  | 25% | 6d |  | 78d | finish no earlier than 2013-02-23 | Gino Guzman; Michel Aguilar | 128h | 32h | 100% | 100% |
| 12 | 1.1.4 | **Evaluación del Cliente** | 2d | 2013-03-04 A | 2013-03-05 |  | 99% | 0d |  |  |  | Amira Lanao; Manuel Saenz | 48h | 32h | 0% | 0% |
| 13 | 1.1.4.1 | Actas de Seguimiento Interno | 1d | 2013-03-08 A | 2013-03-08 A |  | 100% |  |  |  | start no earlier than 2012-09-12 | Arnold Paico | 8h | 8h | 100% | 100% |
| 14 | 1.1.4.2 | Actas de Seguimiento Externo | 1d | 2013-03-05 A | 2013-03-05 A | 13 | 100% |  |  |  | finish no earlier than 2012-09-13 | Arnold Paico; Manuel Saenz | 8h | 8h | 100% | 100% |
| 15 | 1.1.4.3 | Aceptacion del Entregable - interacion 1 | 1d | 2013-03-05 A | 2013-03-05 A | 14 | 100% |  |  |  | finish no earlier than 2013-02-21 | Arnold Paico; Manuel Saenz | 16h | 16h | 100% | 100% |
| 16 | 1.2 | **Iteracion 2** | 18d | 2013-03-06 | 2013-03-26 |  | 63% | 6.63d | 2013-02-13 |  |  |  | 568h | 376h | 0% | 0% |
| 17 | 1.2.1 | **Planificación** | 27d | 2013-02-13 A | 2013-03-16 |  | 56% | 12d |  |  |  | Amira Lanao | 288h | 160h | 0% | 0% |
| 18 | 1.2.1.1 | Lista Maestra de Requerimientos | 4d | 2013-03-06 A | 2013-03-09 |  | 25% | 3d |  | 67d | finish no earlier than 2013-03-09 | Gino Guzman | 32h | 8h | 100% | 100% |
| 19 | 1.2.1.2 | Matriz de Trazabilidad | 1d | 2013-03-11 A | 2013-03-11 A | 18 | 100% |  |  |  | finish no earlier than 2012-09-16 | Gino Guzman | 8h | 8h | 100% | 100% |
| 20 | 1.2.1.3 | Casos de Uso | 1d | 2013-03-12 A | 2013-03-12 A |  | 100% |  |  |  | finish no earlier than 2012-09-15 | Michel Aguilar | 8h | 8h | 100% | 100% |
| 21 | 1.2.1.4 | Diagrama de Casos de Uso | 1d | 2013-02-13 A | 2013-02-13 A | 20 | 100% |  |  |  | finish no earlier than 2012-09-15 | Michel Aguilar | 8h | 8h | 100% | 100% |
| 22 | 1.2.1.5 | Informe Semanal | 1d | 2013-03-16 | 2013-03-16 |  |  |  |  | 61d | finish no earlier than 2013-03-16 | Arnold Paico | 8h |  | 100% | 100% |
| 23 | 1.2.1.6 | Actas de Reuniones | 1d | 2013-03-15 A | 2013-03-15 A |  | 100% |  |  |  | finish no earlier than 2012-09-18 | Arnold Paico | 8h | 8h | 100% | 100% |
| 24 | 1.2.2 | **Análisis de Riesgos** | 1d | 2013-03-14 A | 2013-03-14 A |  | 100% |  |  |  |  | Gino Guzman | 16h | 16h | 0% | 0% |
| 25 | 1.2.2.1 | Registros de Riesgos | 1d | 2013-03-14 A | 2013-03-14 A |  | 100% |  |  |  | finish no earlier than 2012-09-20 | Gino Guzman; Michel Aguilar | 8h | 8h | 100% | 100% |

| ID | WBS | Task | Duration | Start | Finish | Predecessors | Complete | Remaining | Actual start | Total slack | Constraint | Resources | Work | Actual work | Text6 | Text7 |
| --- | --- | --- | --- | --- | --- | --- | --- | --- | --- | --- | --- | --- | --- | --- | --- | --- |
| 26 | 1.2.3 | **Ingeniería** | 6d | 2013-03-18 A | 2013-03-23 |  | 83% | 1d |  |  |  | Michel Aguilar | 192h | 168h | 0% | 0% |
| 27 | 1.2.3.1 | Desarrollo de Logica de Negocio | 6d | 2013-03-18 A | 2013-03-23 |  | 83% | 1d |  | 55d | finish no earlier than 2013-03-23 | Arnold Paico; Gino Guzman; Michel Aguilar | 144h | 120h | 100% | 100% |
| 28 | 1.2.4 | **Evaluación del Cliente** | 2d | 2013-03-25 A | 2013-03-26 |  | 33% | 1.33d |  |  |  | Amira Lanao; Manuel Saenz | 72h | 32h | 0% | 0% |
| 29 | 1.2.4.1 | Kick Off Metting Interno | 1d | 2013-03-25 | 2013-03-25 |  |  |  |  | 0d | finish no earlier than 2013-03-25 | Arnold Paico | 8h |  |  |  |
| 30 | 1.2.4.2 | Kick Off Metting Externo | 1d | 2013-03-26 | 2013-03-26 | 29 |  |  |  | 0d |  | Arnold Paico; Manuel Saenz | 16h |  |  |  |
| 31 | 1.2.4.3 | Acta de Aceptacion de Entregables | 1d | 2013-03-26 A | 2013-03-26 A | 30 | 100% |  |  |  | finish no earlier than 2012-10-09 | Arnold Paico; Manuel Saenz | 16h | 16h | 100% | 100% |
| 32 | 1.3 | **Iteración 3** | 13d | 2013-03-27 A | 2013-04-11 |  | 47% | 6.93d |  |  |  |  |  |  | 0% | 0% |
| 33 | 1.3.1 | **Planificación** | 6d | 2013-03-27 A | 2013-04-02 |  |  | 6d |  |  |  |  |  |  | 0% | 0% |
| 34 | 1.3.1.1 | Herramienta de Gestión | 3d | 2013-03-27 | 2013-03-29 |  |  |  |  | 0d |  |  |  |  |  |  |
| 35 | 1.3.1.2 | Numero de no Conformidades (Metrica) | 1d | 2013-03-30 | 2013-03-30 | 34 |  |  |  | 0d | start no earlier than 2013-03-30 |  |  |  |  |  |
| 36 | 1.3.1.3 | Checklist de Aseguramiento de Calidad | 1d | 2013-04-01 | 2013-04-01 | 35 |  |  |  | 0d |  |  |  |  |  |  |
| 37 | 1.3.1.4 | Matriz de Seguimiento | 1d | 2013-04-02 | 2013-04-02 | 36 |  |  |  | 0d |  |  |  |  |  |  |
| 38 | 1.3.1.5 | Lista Maestra de Requerimientos Actualizada | 1d | 2013-03-28 A | 2013-03-28 |  |  | 1d |  | 51d | finish no earlier than 2013-03-27 |  |  |  | 100% | 100% |
| 39 | 1.3.2 | **Análisis de Riesgos** | 3d | 2013-04-03 A | 2013-04-05 |  | 67% | 1d |  |  |  |  |  |  | 0% | 0% |
| 40 | 1.3.2.1 | Registros de Riesgos | 1d | 2013-04-03 A | 2013-04-03 A |  | 100% |  |  |  | finish no earlier than 2013-04-03 |  |  |  | 100% | 100% |
| 41 | 1.3.2.2 | Planes de Prueba | 2d | 2013-04-04 A | 2013-04-05 |  | 50% | 1d |  | 44d | finish no earlier than 2012-10-17 |  |  |  | 100% | 100% |
| 42 | 1.3.3 | **Ingeniería** | 3d | 2013-04-05 A | 2013-04-09 A |  | 100% |  |  |  |  |  |  |  | 0% | 0% |
| 43 | 1.3.3.1 | Desarrollo de Persistencia | 3d | 2013-04-05 A | 2013-04-09 A |  | 100% |  |  |  | finish no earlier than 2012-11-08 |  |  |  | 100% | 100% |
| 44 | 1.3.4 | **Evaluación del Cliente** | 1d | 2013-04-11 A | 2013-04-11 A |  | 100% |  |  |  |  |  |  |  | 0% | 0% |
| 45 | 1.3.4.1 | Acta de Aceptacion de Entregables | 1d | 2013-04-11 A | 2013-04-11 A |  | 100% |  |  |  | finish no earlier than 2012-11-09 |  |  |  | 0% | 100% |
| 46 | 1.3.4.2 | Pruebas Funcionales | 1d | 2013-04-11 A | 2013-04-11 A |  | 100% |  |  |  | finish no earlier than 2012-11-13 |  |  |  | 50 | 100% |
| 47 | 1.4 | **Iteración 4(FaltaCorregir)** | 6d | 2013-04-11 | 2013-04-18 |  | 75% | 1.5d | 2012-11-14 |  |  |  |  |  | 0% | 0% |
| 48 | 1.4.1 | **Planificación** | 114d? | 2012-11-14 A | 2013-04-11 |  | 67% | 38d? |  | 5d |  |  |  |  | 0% | 0% |
| 49 | 1.4.1.1 | Métricas de Calidad | 1d? | 2013-04-11 | 2013-04-11 |  |  |  |  | 5d |  |  |  |  |  |  |
| 50 | 1.4.1.2 | Plantilla Ficha Indicador | 1d? | 2013-04-11 | 2013-04-11 |  |  |  |  | 5d |  |  |  |  |  |  |
| 51 | 1.4.1.3 | Manual de Usuario | 1d | 2012-11-14 A | 2012-11-14 A |  | 100% |  |  |  | finish no earlier than 2012-11-15 |  |  |  | 100% | 100% |
| 52 | 1.4.1.4 | Informe Semanal | 1d | 2012-11-14 A | 2012-11-14 A |  | 100% |  |  |  | finish no earlier than 2012-11-15 |  |  |  | 100% | 100% |
| 53 | 1.4.1.5 | Actas de Reuniones | 2d | 2012-11-15 A | 2012-11-16 A |  | 100% |  |  |  | finish no earlier than 2012-11-16 |  |  |  | 100% | 100% |

| ID | WBS | Task | Type | Duration | Start | Finish | Complete | Total slack | Constraint | Text6 | Text7 |
| --- | --- | --- | --- | --- | --- | --- | --- | --- | --- | --- | --- |
| 54 | 1.4.2 | **Análisis de Riesgos** |  | 5d | 2012-11-19 A | 2012-11-23 A | 100% |  |  | 0% | 0% |
| 55 | 1.4.2.1 | Registro de Riesgos |  | 1d | 2012-11-19 A | 2012-11-19 A | 100% |  | start no earlier than 2012-11-19 | 100% | 100% |
| 56 | 1.4.2.2 | Plan de Capacitación |  | 5d | 2012-11-19 A | 2012-11-23 A | 100% |  | finish no earlier than 2012-11-23 | 100% | 100% |
| 57 | 1.4.3 | **Ingeniería** |  | 12d | 2012-11-26 A | 2012-12-11 A | 100% |  |  |  |  |
| 58 | 1.4.3.1 | Pruebas Unitarias |  | 4d | 2012-11-26 A | 2012-11-29 A | 100% |  | finish no earlier than 2012-11-30 | 100% | 100% |
| 59 | 1.4.3.2 | Pruebas Integrales |  | 3d | 2012-12-03 A | 2012-12-05 A | 100% |  | finish no earlier than 2012-12-05 | 100% | 100% |
| 60 | 1.4.3.3 | Pruebas en Producción |  | 2d | 2012-12-06 A | 2012-12-07 A | 100% |  | finish no earlier than 2012-12-07 | 100% | 100% |
| 61 | 1.4.3.4 | Implementación | manual | 2d | 2012-12-10 A | 2012-12-11 A | 100% |  | finish no earlier than 2012-12-21 | 100% | 100% |
| 62 | 1.4.4 | **Evaluación del Cliente** |  | 5d | 2012-12-12 | 2012-12-18 |  |  |  | 0% | 0% |
| 63 | 1.4.4.1 | Acta de Conformidad de Capacitacion |  | 1d | 2012-12-12 | 2012-12-12 |  | 133d | finish no earlier than 2012-12-12 | 100% | 100% |
| 64 | 1.4.4.2 | Soporte | manual | 3d | 2012-12-13 | 2012-12-17 |  |  | finish no earlier than 2012-12-24 | 0% | 100% |
| 65 | 1.4.4.3 | Acta de Finalización del Proyecto |  | 1d | 2012-12-18 | 2012-12-18 |  | 129d | finish no earlier than 2012-12-18 | 0% | 100% |
