# WBS Detallado

Schedule from MS Project, 2013-02-05 to 2013-06-06, A marks actual dates.

## Calendars

- Estándar: Mon-Fri 09:00-13:00, 15:00-19:00; Sat-Sun off. Exceptions (off unless hours are given): 2013-02-09 09:00-13:00, 15:00-19:00, 2013-02-16 09:00-13:00, 15:00-19:00, 2013-02-23 09:00-13:00, 15:00-19:00, 2013-03-09 09:00-13:00, 15:00-19:00, 2013-03-16 09:00-13:00, 15:00-19:00, 2013-03-23 09:00-13:00, 15:00-19:00, 2013-03-30 09:00-13:00, 15:00-19:00, 2013-05-25 09:00-13:00, 15:00-19:00.

## Resources

| Resource |
| --- |
| Amira Lanao |
| Gino Guzman |
| Arnold Paico |
| Michel Aguilar |
| Manuel Saenz |

## Schedule

| ID | WBS | Task | Duration | Start | Finish | Predecessors | Complete | Remaining | Actual start | Total slack | Constraint | Resources | Work | Actual work | Text6 | Text7 |
| --- | --- | --- | --- | --- | --- | --- | --- | --- | --- | --- | --- | --- | --- | --- | --- | --- |
| 1 | 1 | **Sistema de Intranet de Alumnos - S.I.A** | 96d | 2013-02-05 A | 2013-06-06 |  | 31% | 66d |  |  |  |  | 800h | 330.18h | 0% | 0% |
| 2 | 1.1 | **Iteracion 1** | 24d | 2013-02-05 A | 2013-03-05 |  | 34% | 15.84d |  |  |  |  | 552h | 178.18h | 0% | 0% |
| 3 | 1.1.1 | **Planificación** | 6d | 2013-02-05 A | 2013-02-11 |  | 29% | 4.29d |  |  |  | Amira Lanao | 216h | 72h | 0% | 0% |
| 4 | 1.1.1.1 | Plan de Proyecto | 4d | 2013-02-05 A | 2013-02-08 |  | 25% | 3d |  | 92d | finish no earlier than 2013-02-07 | Amira Lanao; Arnold Paico; Gino Guzman; Michel Aguilar | 128h | 32h | 100% | 100% |
| 5 | 1.1.1.2 | Cronograma Detallado | 2d | 2013-02-08 A | 2013-02-09 |  | 50% | 1d |  | 91d | finish no earlier than 2013-02-09 | Gino Guzman; Michel Aguilar | 32h | 16h | 100% | 100% |
| 6 | 1.1.1.3 | Informe Quincenal | 1d | 2013-02-09 A | 2013-02-09 |  |  | 1d |  | 91d | finish no earlier than 2012-09-04 | Arnold Paico | 8h |  | 100% | 100% |
| 7 | 1.1.2 | **Analisis de Riesgos** | 1d | 2013-02-09 A | 2013-02-09 A |  | 100% |  |  |  |  | Gino Guzman | 8h | 8h | 0% | 0% |
| 8 | 1.1.2.1 | Registro de Riesgos | 1d | 2013-02-09 A | 2013-02-09 A |  | 100% |  |  |  | finish no earlier than 2013-02-09 |  |  |  | 100% | 100% |
| 9 | 1.1.3 | **Ingeniería** | 12d | 2013-02-11 A | 2013-02-23 |  | 18% | 9.86d |  |  |  | Michel Aguilar | 280h | 66.18h | 0% | 0% |
| 10 | 1.1.3.1 | Modelaje Base de Datos | 6d | 2013-02-11 A | 2013-02-16 |  | 8% | 5.5d |  | 85d | finish no earlier than 2013-02-16 | Michel Aguilar; Arnold Paico | 56h | 8h | 100% | 100% |
| 11 | 1.1.3.2 | Desarrollo de Prototipos de Interfaces | 8d | 2013-02-15 A | 2013-02-23 |  | 25% | 6d |  | 79d | finish no earlier than 2013-02-23 | Gino Guzman; Michel Aguilar | 128h | 32h | 100% | 100% |
| 12 | 1.1.4 | **Evaluación del Cliente** | 2d | 2013-03-04 A | 2013-03-05 |  | 99% | 0d |  |  |  | Amira Lanao; Manuel Saenz | 48h | 32h | 0% | 0% |
| 13 | 1.1.4.1 | Acta de Seguimiento Interno | 1d | 2013-03-04 A | 2013-03-04 A |  | 100% |  |  |  | start no earlier than 2012-09-12 | Arnold Paico | 8h | 8h | 100% | 100% |
| 14 | 1.1.4.2 | Acta de SeguimientoExterno | 1d | 2013-03-05 A | 2013-03-05 A | 13 | 100% |  |  |  | finish no earlier than 2012-09-13 | Arnold Paico; Manuel Saenz | 8h | 8h | 100% | 100% |
| 15 | 1.1.4.3 | Acta de Aceptacion de Entregables | 1d | 2013-03-05 A | 2013-03-05 A | 14 | 100% |  |  |  | finish no earlier than 2013-02-21 | Arnold Paico; Manuel Saenz | 16h | 16h | 100% | 100% |
| 16 | 1.2 | **Iteracion 2** | 18d | 2013-03-06 | 2013-03-26 |  | 50% | 9d | 2013-02-13 |  |  |  | 248h | 152h | 0% | 0% |
| 17 | 1.2.1 | **Flujo de Trabajo de Diseño** | 27d | 2013-02-13 A | 2013-03-16 |  | 67% | 9d |  |  |  | Amira Lanao | 232h | 136h | 0% | 0% |
| 18 | 1.2.1.1 | Documento de Arquitectura de Software | 1d? | 2013-02-13 | 2013-02-13 |  |  |  |  | 26d |  |  |  |  |  |  |
| 19 | 1.2.1.2 | Casos de Uso | 1d | 2013-03-12 A | 2013-03-12 A |  | 100% |  |  |  | finish no earlier than 2012-09-15 | Michel Aguilar | 8h | 8h | 100% | 100% |
| 20 | 1.2.1.3 | Diagrama de Casos de Uso | 1d | 2013-02-13 A | 2013-02-13 A | 19 | 100% |  |  |  | finish no earlier than 2012-09-15 | Michel Aguilar | 8h | 8h | 100% | 100% |
| 21 | 1.2.2 | **Flujo de Trabajos de Requerimientos** | 1d | 2013-03-14 A | 2013-03-14 |  | 33% | 0.67d |  |  |  | Gino Guzman | 16h | 16h | 0% | 0% |
| 22 | 1.2.2.1 | Lista Maestra de Requerimientos | 1d? | 2013-03-14 | 2013-03-14 |  |  |  |  | 0d |  |  |  |  |  |  |
| 23 | 1.2.2.2 | Matriz de Trazabilidad Actualizada | 1d? | 2013-03-14 | 2013-03-14 |  |  |  |  | 0d |  |  |  |  |  |  |
| 24 | 1.2.2.3 | Plan de Pruebas | 1d | 2013-03-14 A | 2013-03-14 A |  | 100% |  |  |  | finish no earlier than 2012-09-20 | Gino Guzman; Michel Aguilar | 8h | 8h | 100% | 100% |

| ID | WBS | Task | Duration | Start | Finish | Predecessors | Complete | Remaining | Total slack | Free slack | Constraint | Text6 | Text7 |
| --- | --- | --- | --- | --- | --- | --- | --- | --- | --- | --- | --- | --- | --- |
| 25 | 1.3 | **Iteración 3** | 13d | 2013-03-27 | 2013-04-11 |  |  |  |  |  |  | 0% | 0% |
| 26 | 1.3.1 | **Flujo de Trabajo de Requerimientos** | 6d | 2013-03-27 | 2013-04-02 |  |  |  |  |  |  | 0% | 0% |
| 27 | 1.3.1.1 | Caso de Uso | 3d | 2013-03-27 | 2013-03-29 |  |  |  | 0d |  |  |  |  |
| 28 | 1.3.1.2 | Diagrama de Casos de Uso | 1d | 2013-03-30 | 2013-03-30 | 27 |  |  | 0d |  | start no earlier than 2013-03-30 |  |  |
| 29 | 1.3.1.3 | Lista Maestra de Requerimientos | 1d? | 2013-04-01 | 2013-04-01 | 28 |  |  | 0d |  |  |  |  |
| 30 | 1.3.1.4 | Matriz de Trazabilidad Actualizada | 1d | 2013-04-02 | 2013-04-02 | 29 |  |  | 0d |  |  |  |  |
| 31 | 1.4 | **Iteración 4** | 11d | 2013-05-24 A | 2013-06-06 |  | 33% | 7.33d |  |  |  | 0% | 0% |
| 32 | 1.4.1 | **Flujo de Trabajo de Distribucion** | 5d | 2013-05-24 A | 2013-05-29 |  | 33% | 3.33d |  |  |  | 0% | 0% |
| 33 | 1.4.1.1 | Manual de Usuario | 1d | 2013-05-24 | 2013-05-24 |  |  |  | 4d | 0d |  |  |  |
| 34 | 1.4.1.2 | Acta de conformidad de Capacitacion | 1d | 2013-05-25 | 2013-05-25 | 33 |  |  | 9d |  | start no earlier than 2013-05-25 |  |  |
| 35 | 1.4.1.3 | Software en Producción | 1d | 2013-05-27 A | 2013-05-27 A | 34 | 100% |  |  |  | finish no earlier than 2012-11-15 | 100% | 100% |
